Schedule from MS Project, 2025-12-03 to 2026-01-28.

## Calendars

- Standard: Mon-Fri 08:00-12:00, 13:00-17:00; Sat-Sun off.
- 6 day cal: Mon-Sat 08:00-12:00, 13:00-17:00; Sun off.

## Schedule

| ID | WBS | Task | Type | Duration | Start | Finish | Predecessors | Total slack | Free slack | Constraint | Calendar |
| --- | --- | --- | --- | --- | --- | --- | --- | --- | --- | --- | --- |
| 1 | 1 | **Bid for Security System Installment** |  | 37d | 2025-12-03 | 2026-01-22 |  | 0d |  |  |  |
| 2 | 1.1 | **Technical Specification** |  | 13d | 2025-12-03 | 2025-12-19 |  | 12d |  |  |  |
| 3 | 1.1.1 | Approval to Bid (start) | milestone | 0d | 2025-12-03 | 2025-12-03 |  | 12d | 0d | start no earlier than 2025-12-03 |  |
| 4 | 1.1.2 | Determine Installation Requirements |  | 4d | 2025-12-03 | 2025-12-08 | 3 | 12d | 0d |  |  |
| 5 | 1.1.3 | Create Technical Specification |  | 5d | 2025-12-09 | 2025-12-15 | 4 | 12d | 0d |  |  |
| 6 | 1.1.4 | Identify Supplier Components |  | 2d | 2025-12-16 | 2025-12-17 | 5 | 12d | 0d |  |  |
| 7 | 1.1.5 | Validate Technical Specification |  | 2d | 2025-12-18 | 2025-12-19 | 6 | 14d | 0d |  |  |
| 8 | 1.2 | **Delivery Plan** |  | 4d | 2025-12-22 | 2025-12-25 |  | 14d |  |  |  |
| 9 | 1.2.1 | Document Delivery Methodology |  | 4d | 2025-12-22 | 2025-12-25 | 7 | 14d | 0d |  |  |
| 10 | 1.3 | Obtain Quotes from Suppliers |  | 8d | 2026-01-05 | 2026-01-14 | 6 | 0d |  | start no earlier than 2026-01-03 |  |
| 11 | 1.4 | Calculate the Bid Estimate |  | 3d | 2026-01-15 | 2026-01-17 | 9, 10 | 0d |  |  | 6 day cal |
| 12 | 1.5 | Create the Project Schedule |  | 3d | 2026-01-19 | 2026-01-21 | 11 | 0d |  |  | 6 day cal |
| 13 | 1.6 | Review the Delivery Plan |  | 1d | 2026-01-22 | 2026-01-22 | 12 | 0d |  |  |  |
| 14 | 2 | **Bid Document** |  | 24d | 2025-12-26 | 2026-01-28 |  | 0d |  |  |  |
| 15 | 2.1 | Create Draft of Bid Document |  | 6d | 2025-12-26 | 2026-01-02 | 9 | 14d |  |  |  |
| 16 | 2.2 | Review Bid Document |  | 2d | 2026-01-23 | 2026-01-26 | 13, 15 | 0d |  |  |  |
| 17 | 2.3 | Finalize and Submit Bid Document |  | 2d | 2026-01-27 | 2026-01-28 | 16 | 0d |  |  |  |
| 18 | 2.4 | Bid Document Submitted (finish) | milestone | 0d | 2026-01-28 | 2026-01-28 | 17 | 0d |  | finish no later than 2026-01-28 |  |
